# Клиника

Schedule from MS Project, 2018-02-08 to 2018-04-26, status date 2018-02-19, costs in р., A marks actual dates.
SPecialiST RePack

## Calendars

- Стандартный: Mon-Fri 09:00-13:00, 14:00-18:00; Sat-Sun off.

## Resources

| Resource | Group | Unit | Rate | Cost per use |
| --- | --- | --- | --- | --- |
| Трудовой бюджет | Бюджет |  |  |  |
| Бюджет_оборудование | Бюджет |  |  |  |
| Бюджет_расходы | Бюджет |  |  |  |
| Бюджет_материалы | Бюджет |  |  |  |
| Директор | Сотрудники |  | 300 |  |
| Главврач | Сотрудники |  | 280 |  |
| Бухгалтер | Сотрудники |  | 200 |  |
| Врач | Сотрудники |  | 220 |  |
| Медсестра | Сотрудники |  | 120 |  |
| Санитарка | Сотрудники |  | 90 |  |
| Бригадир | Наемные рабочие |  | 200 |  |
| Мастер отделочных работ | Наемные рабочие |  | 150 |  |
| Электрик | Наемные рабочие |  | 150 |  |
| Сантехник | Наемные рабочие |  | 150 |  |
| Программист | Наемные рабочие |  | 150 |  |
| Оформление документации | Документы |  |  |  |
| Лицензирование | Документы |  |  |  |
| Линолеум | Материалы | Кв.м |  | 50 |
| Плитка напольная | Материалы | шт |  | 50 |
| Плитка настенная | Материалы | шт |  | 30 |
| Обои | Материалы | рулон |  | 800 |
| Дверь | Материалы | шт |  | 4000 |
| Унитаз | Оборудование | шт |  | 5000 |
| Раковина | Оборудование | шт |  | 3000 |
| Рабочее место офтальмолога | Оборудование | шт |  | 250000 |
| Проектор знаков | Оборудование | шт |  | 80000 |
| Тонометр | Оборудование | шт |  | 100000 |
| Линзы | Оборудование | шт |  | 56000 |
| Линейки | Оборудование | шт |  | 20000 |
| Офтальмоскоп | Оборудование | шт |  | 8500 |
| Щелевые лампы | Оборудование | шт |  | 150000 |
| Таблицы | Оборудование | шт |  | 600 |
| Диван | Оборудование |  |  | 10000 |
| Шкаф | Оборудование |  |  | 30000 |
| Рабочий стол | Оборудование |  |  | 5000 |
| Письменный стол | Оборудование |  |  | 3000 |
| Кресло | Оборудование |  |  | 3000 |
| Стул | Оборудование |  |  | 1000 |
| Кушетка | Оборудование |  |  | 6000 |
| Телевизор | Оборудование |  |  | 20000 |
| Компьютер | Оборудование |  |  | 30000 |
| Монитор | Оборудование |  |  | 5000 |
| Заказ баннера | Маркетинг |  |  |  |
| Заказ вывески | Маркетинг |  |  |  |
| Заказ сайта | Маркетинг |  |  |  |
| Кассир |  |  | 120 |  |

## Schedule

| ID | WBS | Task | Type | Duration | Start | Finish | Predecessors | Complete | Remaining | Baseline start | Baseline finish | Baseline duration | Baseline 1 start | Baseline 1 finish | Total slack | Free slack | Constraint | Resources | Work | Actual work | Cost | Baseline cost | Actual cost |
| --- | --- | --- | --- | --- | --- | --- | --- | --- | --- | --- | --- | --- | --- | --- | --- | --- | --- | --- | --- | --- | --- | --- | --- |
| 1 | 1 | **Открытие офтальмологической клиники** |  | 56d | 2018-02-08 A | 2018-04-26 |  | 84% | 9.2d | 2018-02-08 | 2018-04-26 | 56d | 2018-02-08 | 2018-04-26 | 0d |  |  |  | 744h | 639.6h | 1,028,890 | 1,028,890 | 964,340 |
| 2 | 1.1 | **Подготовительные работы** |  | 56d | 2018-02-08 A | 2018-04-26 A |  | 100% |  | 2018-02-08 | 2018-04-26 | 56d | 2018-02-08 | 2018-04-26 |  |  |  |  | 384h | 384h | 122,200 | 122,200 | 122,200 |
| 3 | 1.1.1 | Оформление документации |  | 6d | 2018-02-08 A | 2018-02-15 A |  | 100% |  | 2018-02-08 | 2018-02-15 | 6d | 2018-02-08 | 2018-02-15 |  |  | start no earlier than 2018-02-08 | Оформление документации [0.1%] |  |  | 7,000 | 7,000 | 7,000 |
| 4 | 1.1.2 | Выбор помещения |  | 6d | 2018-02-16 A | 2018-02-23 A | 3 | 100% |  | 2018-02-16 | 2018-02-23 | 6d | 2018-02-16 | 2018-02-23 |  |  |  | Директор | 48h | 48h | 14,400 | 14,400 | 14,400 |
| 5 | 1.1.3 | Заключение договора аренды | milestone | 0d | 2018-02-23 A | 2018-02-23 A | 4 | 100% |  | 2018-02-23 | 2018-02-23 |  | 2018-02-23 | 2018-02-23 |  |  |  | Директор |  |  |  |  |  |
| 6 | 1.1.4 | Лицензирование |  | 42d | 2018-02-28 A | 2018-04-26 A | 21 | 100% |  | 2018-02-28 | 2018-04-26 | 42d | 2018-02-28 | 2018-04-26 |  |  | finish no earlier than 2018-04-26 | Директор | 336h | 336h | 100,800 | 100,800 | 100,800 |
| 7 | 1.2 | **Закупка стройматериалов** |  | 1d | 2018-02-26 | 2018-02-26 | 5 |  |  | 2018-02-26 | 2018-02-26 | 1d | 2018-02-26 | 2018-02-26 | 36d | 0d |  |  | 6.4h |  | 14,850 | 14,850 |  |
| 8 | 1.2.1 | Закупка линолиума и напольной плитки |  | 1d | 2018-02-26 | 2018-02-26 | 5 |  |  | 2018-02-26 | 2018-02-26 | 1d | 2018-02-26 | 2018-02-26 | 36d |  | start no earlier than 2018-02-26 | Директор [20%]; Линолеум [80 Кв.м]; Плитка напольная [80 шт] | 1.6h |  | 580 | 580 |  |
| 9 | 1.2.2 | Закупка настенной плитки и обоев |  | 1d | 2018-02-26 | 2018-02-26 | 5 |  |  | 2018-02-26 | 2018-02-26 | 1d | 2018-02-26 | 2018-02-26 | 36d |  | start no earlier than 2018-02-26 | Директор [20%]; Плитка настенная [500 шт]; Обои [8 рулон] | 1.6h |  | 1,310 | 1,310 |  |
| 10 | 1.2.3 | Закупка межкомнатных дверей |  | 1d | 2018-02-26 | 2018-02-26 | 5 |  |  | 2018-02-26 | 2018-02-26 | 1d | 2018-02-26 | 2018-02-26 | 36d | 0d | start no earlier than 2018-02-26 | Директор [20%]; Дверь [5 шт] | 1.6h |  | 4,480 | 4,480 |  |
| 11 | 1.2.4 | Закупка сантехники |  | 1d | 2018-02-26 | 2018-02-26 | 5 |  |  | 2018-02-26 | 2018-02-26 | 1d | 2018-02-26 | 2018-02-26 | 36d |  | start no earlier than 2018-02-26 | Директор [20%]; Унитаз [2 шт]; Раковина [4 шт] | 1.6h |  | 8,480 | 8,480 |  |
| 12 | 1.3 | **Ремонт помещения** |  | 7d | 2018-02-27 | 2018-03-07 | 7 |  |  | 2018-02-27 | 2018-03-07 | 7d | 2018-02-27 | 2018-03-07 | 36d |  |  |  | 98h |  | 14,700 | 14,700 |  |
| 13 | 1.3.1 | Замена проводки |  | 3d | 2018-02-27 | 2018-03-01 | 5 |  |  | 2018-02-27 | 2018-03-01 | 3d | 2018-02-27 | 2018-03-01 | 40d |  |  | Электрик | 24h |  | 3,600 | 3,600 |  |
| 14 | 1.3.2 | Разводка водопровода |  | 3d | 2018-02-27 | 2018-03-01 | 5 |  |  | 2018-02-27 | 2018-03-01 | 3d | 2018-02-27 | 2018-03-01 | 38d | 0d |  | Сантехник | 24h |  | 3,600 | 3,600 |  |
| 15 | 1.3.3 | Установка межкомнатных дверей |  | 1d | 2018-02-27 | 2018-02-27 | 10 |  |  | 2018-02-27 | 2018-02-27 | 1d | 2018-02-27 | 2018-02-27 | 36d | 0d |  | Мастер отделочных работ [25%] | 2h |  | 300 | 300 |  |
| 16 | 1.3.4 | Облицовка стен плиткой и обоями |  | 4d | 2018-02-28 | 2018-03-05 | 15 |  |  | 2018-02-28 | 2018-03-05 | 4d | 2018-02-28 | 2018-03-05 | 36d | 0d |  | Мастер отделочных работ [25%] | 8h |  | 1,200 | 1,200 |  |
| 17 | 1.3.5 | Укладка напольной плитки |  | 3d | 2018-02-28 | 2018-03-02 | 15 |  |  | 2018-02-28 | 2018-03-02 | 3d | 2018-02-28 | 2018-03-02 | 39d |  |  | Мастер отделочных работ [25%] | 6h |  | 900 | 900 |  |
| 18 | 1.3.6 | Укладка линолиума |  | 1d | 2018-02-28 | 2018-02-28 | 15 |  |  | 2018-02-28 | 2018-02-28 | 1d | 2018-02-28 | 2018-02-28 | 41d |  |  | Мастер отделочных работ [25%] | 2h |  | 300 | 300 |  |
| 19 | 1.3.7 | Монтаж сантехники |  | 2d | 2018-03-02 | 2018-03-05 | 14 |  |  | 2018-03-02 | 2018-03-05 | 2d | 2018-03-02 | 2018-03-05 | 38d |  |  | Сантехник | 16h |  | 2,400 | 2,400 |  |
| 20 | 1.3.8 | Монтаж освещения |  | 2d | 2018-03-06 | 2018-03-07 | 16 |  |  | 2018-03-06 | 2018-03-07 | 2d | 2018-03-06 | 2018-03-07 | 36d | 0d |  | Электрик | 16h |  | 2,400 | 2,400 |  |
| 21 | 1.3.9 | Сдача объекта | milestone | 0d | 2018-03-07 | 2018-03-07 | 20 |  |  | 2018-03-07 | 2018-03-07 |  | 2018-03-07 | 2018-03-07 | 36d |  |  | Бригадир |  |  |  |  |  |
| 22 | 1.4 | **Закупка оборудования и мебели** |  | 12d | 2018-02-26 A | 2018-03-13 A | 21 | 100% |  | 2018-02-26 | 2018-03-13 | 12d | 2018-02-26 | 2018-03-13 |  |  |  |  | 43.6h | 43.6h | 790,540 | 790,540 | 790,540 |
| 23 | 1.4.1 | Закупка рабочего места врача-офтальмолога |  | 3d | 2018-02-26 A | 2018-02-28 A | 20 | 100% |  | 2018-02-26 | 2018-02-28 | 3d | 2018-02-26 | 2018-02-28 |  |  |  | Главврач [25%]; Рабочее место офтальмолога [3 шт] | 6h | 6h | 251,680 | 251,680 | 251,680 |
| 24 | 1.4.2 | Закупка проектора знаков |  | 3d | 2018-03-01 A | 2018-03-05 A | 23 | 100% |  | 2018-03-01 | 2018-03-05 | 3d | 2018-03-01 | 2018-03-05 |  |  |  | Главврач [25%]; Проектор знаков [2 шт] | 6h | 6h | 81,680 | 81,680 | 81,680 |
| 25 | 1.4.3 | Закупка бесконтактного тонометра |  | 3d | 2018-03-01 A | 2018-03-05 A | 23 | 100% |  | 2018-03-01 | 2018-03-05 | 3d | 2018-03-01 | 2018-03-05 |  |  |  | Главврач [25%]; Тонометр [1 шт] | 6h | 6h | 101,680 | 101,680 | 101,680 |
| 26 | 1.4.4 | Закупка наборов пробных линз и оправ | milestone | 0d | 2018-03-05 A | 2018-03-06 A | 24 | 100% |  | 2018-03-05 | 2018-03-06 |  | 2018-03-05 | 2018-03-06 |  |  |  | Главврач [25%]; Линзы [1 шт] |  |  | 56,000 | 56,000 | 56,000 |
| 27 | 1.4.5 | Закупка скиоскопических линеек | milestone | 0d | 2018-03-05 A | 2018-03-06 A | 24 | 100% |  | 2018-03-05 | 2018-03-06 |  | 2018-03-05 | 2018-03-06 |  |  |  | Главврач [25%]; Линейки [1 шт] |  |  | 20,000 | 20,000 | 20,000 |
| 28 | 1.4.6 | Закупка офтальмоскопа |  | 3d | 2018-03-01 A | 2018-03-05 A | 23 | 100% |  | 2018-03-01 | 2018-03-05 | 3d | 2018-03-01 | 2018-03-05 |  |  |  | Главврач [25%]; Офтальмоскоп [1 шт] | 6h | 6h | 10,180 | 10,180 | 10,180 |
| 29 | 1.4.7 | Закупка щелевых ламп |  | 3d | 2018-03-01 A | 2018-03-05 A | 23 | 100% |  | 2018-03-01 | 2018-03-05 | 3d | 2018-03-01 | 2018-03-05 |  |  |  | Главврач [25%]; Щелевые лампы [2 шт] | 6h | 6h | 151,680 | 151,680 | 151,680 |
| 30 | 1.4.8 | Закупка полихроматических таблиц |  | 1d | 2018-03-06 A | 2018-03-06 A | 28 | 100% |  | 2018-03-06 | 2018-03-06 | 1d | 2018-03-06 | 2018-03-06 |  |  |  | Таблицы [2 шт]; Главврач [25%] | 2h | 2h | 1,160 | 1,160 | 1,160 |
| 31 | 1.4.9 | Закупка столов рабочих и письменных |  | 1d | 2018-03-07 A | 2018-03-07 A | 30 | 100% |  | 2018-03-07 | 2018-03-07 | 1d | 2018-03-07 | 2018-03-07 |  |  |  | Директор [20%]; Рабочий стол [300%]; Письменный стол [200%] | 1.6h | 1.6h | 8,480 | 8,480 | 8,480 |
| 32 | 1.4.10 | Закупка дивана, кушеток и шкафов |  | 1d | 2018-03-07 A | 2018-03-07 A | 30 | 100% |  | 2018-03-07 | 2018-03-07 | 1d | 2018-03-07 | 2018-03-07 |  |  |  | Директор [25%]; Диван [200%]; Кушетка [500%]; Шкаф [400%] | 2h | 2h | 46,600 | 46,600 | 46,600 |
| 33 | 1.4.11 | Закупка кресел и стульев |  | 1d | 2018-03-08 A | 2018-03-08 A | 31 | 100% |  | 2018-03-08 | 2018-03-08 | 1d | 2018-03-08 | 2018-03-08 |  |  |  | Директор [25%]; Кресло [500%]; Стул [500%] | 2h | 2h | 4,600 | 4,600 | 4,600 |
| 34 | 1.4.12 | Закупка телевизора |  | 1d | 2018-03-09 A | 2018-03-09 A | 33 | 100% |  | 2018-03-09 | 2018-03-09 | 1d | 2018-03-09 | 2018-03-09 |  |  |  | Директор [25%]; Телевизор | 2h | 2h | 20,600 | 20,600 | 20,600 |
| 35 | 1.4.13 | Закупка компьютеров и переферии |  | 2d | 2018-03-12 A | 2018-03-13 A | 34 | 100% |  | 2018-03-12 | 2018-03-13 | 2d | 2018-03-12 | 2018-03-13 |  |  |  | Директор [25%]; Компьютер [500%]; Монитор [500%] | 4h | 4h | 36,200 | 36,200 | 36,200 |

| ID | WBS | Task | Type | Duration | Start | Finish | Predecessors | Complete | Baseline start | Baseline finish | Baseline duration | Baseline 1 start | Baseline 1 finish | Resources | Work | Actual work | Cost | Baseline cost | Actual cost |
| --- | --- | --- | --- | --- | --- | --- | --- | --- | --- | --- | --- | --- | --- | --- | --- | --- | --- | --- | --- |
| 36 | 1.5 | **Подбор персонала** |  | 17d | 2018-02-26 A | 2018-03-20 A |  | 100% | 2018-02-26 | 2018-03-20 | 17d | 2018-02-26 | 2018-03-20 |  | 68h | 68h | 20,400 | 20,400 | 20,400 |
| 37 | 1.5.1 | Проведение собеседований на должность главного бухгалтера и главного врача |  | 9d | 2018-02-26 A | 2018-03-08 A | 20 | 100% | 2018-02-26 | 2018-03-08 | 9d | 2018-02-26 | 2018-03-08 | Директор [50%] | 36h | 36h | 10,800 | 10,800 | 10,800 |
| 38 | 1.5.2 | Проведение собеседований для медперсонала |  | 8d | 2018-03-09 A | 2018-03-20 A | 37 | 100% | 2018-03-09 | 2018-03-20 | 8d | 2018-03-09 | 2018-03-20 | Директор [25%] | 16h | 16h | 4,800 | 4,800 | 4,800 |
| 39 | 1.5.3 | Проведение собеседований для обслуживающего персонала |  | 8d | 2018-03-09 A | 2018-03-20 A | 37 | 100% | 2018-03-09 | 2018-03-20 | 8d | 2018-03-09 | 2018-03-20 | Директор [25%] | 16h | 16h | 4,800 | 4,800 | 4,800 |
| 40 | 1.6 | **Маркетинговая кампания** |  | 10d | 2018-03-21 A | 2018-04-03 A | 36 | 100% | 2018-03-21 | 2018-04-03 | 10d | 2018-03-21 | 2018-04-03 |  | 144h | 144h | 66,200 | 66,200 | 31,200 |
| 41 | 1.6.1 | Установка вывески салона |  | 1d | 2018-03-21 A | 2018-03-21 A | 36 | 100% | 2018-03-21 | 2018-03-21 | 1d | 2018-03-21 | 2018-03-21 | Заказ вывески [6.2%]; Директор [50%] | 4h | 4h | 6,200 | 6,200 | 1,200 |
| 42 | 1.6.2 | Размещение рекламных баннеров |  | 5d | 2018-03-22 A | 2018-03-28 A | 41 | 100% | 2018-03-22 | 2018-03-28 | 5d | 2018-03-22 | 2018-03-28 | Заказ баннера [2.5%]; Директор [50%] | 20h | 20h | 16,000 | 16,000 | 6,000 |
| 43 | 1.6.3 | Создание сайта |  | 10d | 2018-03-21 A | 2018-04-03 A | 36 | 100% | 2018-03-21 | 2018-04-03 | 10d | 2018-03-21 | 2018-04-03 | Заказ сайта [2.5%]; Директор [50%]; Программист | 120h | 120h | 44,000 | 44,000 | 24,000 |
| 44 | 1.7 | **Работа клиники** |  | 0d | 2018-04-26 A | 2018-04-26 A | 6 | 100% | 2018-04-26 | 2018-04-26 | 0d | 2018-04-26 | 2018-04-26 |  |  |  |  |  |  |
| 45 | 1.7.1 | Прием пациентов и оказание услуг | milestone | 0d | 2018-04-26 A | 2018-04-26 A | 6 | 100% | 2018-04-26 | 2018-04-26 |  | 2018-04-26 | 2018-04-26 | Директор; Медсестра [50%]; Санитарка [50%]; Врач; Главврач; Бухгалтер; Кассир |  |  |  |  |  |
