Schedule from MS Project, 2009-11-16 to 2009-12-23, status date 2018-02-18, costs in р., A marks actual dates.
Microsoft

## Calendars

- Стандартный: Mon-Fri 09:00-13:00, 14:00-18:00; Sat-Sun off.

## Resources

| Resource | Group | Unit | Rate | Cost per use |
| --- | --- | --- | --- | --- |
| Директор |  |  | 210 |  |
| Управляющий |  |  | 190 |  |
| Парикмахер |  |  | 190 |  |
| Техперсонал |  |  | 80 |  |
| Бригадир |  |  | 120 |  |
| Мастер отделочных работ |  |  | 120 |  |
| Сантехник |  |  | 100 |  |
| Оформление документации |  |  |  |  |
| Установка кассового аппарата |  |  |  |  |
| Доставка материалов и оборудования |  |  |  |  |
| Заказ вывески |  |  |  |  |
| Заказ рекламы в Интернете |  |  |  |  |
| Обои | Стройматериалы | рулон |  | 800 |
| Плитка напольная | Стройматериалы | шт |  | 200 |
| Клей для обоев | Стройматериалы | упаковка |  | 255 |
| Клей для плитки | Стройматериалы | упаковка |  | 100 |
| Раковина | Оборудование | шт |  | 1900 |
| Унитаз | Оборудование | шт |  | 2500 |
| Стерилизатор | Оборудование | шт |  | 1500 |
| Диван | Мебель | шт |  | 7000 |
| Кресло для клиента | Мебель | шт |  | 5000 |
| У/ф лампа | Оборудование | шт |  | 5000 |
| Компьютер | Оборудование | шт |  | 30000 |
| Монитор | Оборудование | шт |  | 5000 |
| Мышь компьютерная | Оборудование | шт |  | 300 |
| Клавиатура | Оборудование | шт |  | 400 |
| Колонки музыкальные | Оборудование | шт |  | 1000 |
| Кассовый аппарат | Оборудование | шт |  | 10000 |
| ЖК телевизор | Оборудование | шт |  | 20000 |
| Стилист |  |  | 190 |  |
| Мойка для волос | Оборудование | шт |  | 25000 |
| Зеркало для стилиста с рабочим столом | Оборудование | шт |  | 30000 |
| Зеркало | Оборудование | шт |  | 5000 |
| Стойка администратора | Мебель | шт |  | 15000 |
| Тележка | Мебель | шт |  | 15000 |
| Лаборатория | Мебель | шт |  | 80000 |
| Кресло для мастера | Мебель | шт |  | 7000 |
| Вапазон | Оборудование | шт |  | 60000 |
| Рабочий стол |  | шт |  | 7000 |
| Машинка для стрижки | Оборудование | шт |  | 2000 |
| Постер | Оборудование | шт |  | 2000 |
| Витрина | Мебель | шт |  | 30000 |
| Кофейный столик | Мебель | шт |  | 10000 |
| Фен | Оборудование | шт |  | 5000 |
| Штукатурка | Стройматериалы | упаковка |  | 310 |
| Грунтовка | Стройматериалы | упаковка |  | 310 |
| Б_материалы |  |  |  |  |
| Б_оборудование |  |  |  |  |
| Б_расходы |  |  |  |  |
| Б_трудовой |  |  |  |  |

## Schedule

| ID | WBS | Task | Type | Duration | Start | Finish | Predecessors | Complete | Remaining | Baseline start | Baseline finish | Baseline duration | Baseline 1 start | Baseline 1 finish | Total slack | Free slack | Constraint | Resources | Work | Actual work | Cost | Baseline cost | Actual cost |
| --- | --- | --- | --- | --- | --- | --- | --- | --- | --- | --- | --- | --- | --- | --- | --- | --- | --- | --- | --- | --- | --- | --- | --- |
| 1 | 1 | **Открытие парикмахерской** |  | 28d | 2009-11-16 A | 2009-12-23 |  | 14% | 24.08d | 2009-11-16 | 2009-12-23 | 28d | 2009-11-16 | 2009-12-23 | 0d |  |  |  | 266.4h | 56h | 434,808 | 384,808 | 11,760 |
| 2 | 1.1 | **Подготовительные работы** |  | 12d | 2009-11-16 A | 2009-12-01 |  | 58% | 5d | 2009-11-16 | 2009-12-01 | 12d | 2009-11-16 | 2009-12-01 | 3d |  |  |  | 136h | 56h | 35,560 | 35,560 | 11,760 |
| 3 | 1.1.1 | Оформление документов |  | 7d | 2009-11-16 A | 2009-11-24 |  | 99% | 0d | 2009-11-16 | 2009-11-24 | 7d | 2009-11-16 | 2009-11-24 | 0d |  |  | Оформление документации [0.1%]; Директор | 56h | 56h | 18,760 | 18,760 | 11,760 |
| 4 | 1.1.2 | Выбор помещения |  | 5d | 2009-11-25 | 2009-12-01 | 3 |  |  | 2009-11-25 | 2009-12-01 | 5d | 2009-11-25 | 2009-12-01 | 3d | 0d |  | Директор [200%] | 80h |  | 16,800 | 16,800 |  |
| 5 | 1.1.3 | Заключение договора | milestone | 0d | 2009-12-01 | 2009-12-01 | 4 |  |  | 2009-12-01 | 2009-12-01 |  | 2009-12-01 | 2009-12-01 | 3d | 0d |  | Директор |  |  |  |  |  |
| 6 | 1.2 | **Закупка стройматериалов** |  | 1d | 2009-12-02 | 2009-12-02 | 5 |  |  | 2009-12-02 | 2009-12-02 | 1d | 2009-12-02 | 2009-12-02 | 3d | 0d |  |  | 6.4h |  | 31,833 | 31,833 |  |
| 7 | 1.2.1 | Покупка грунтовки и штукатурки |  | 1d | 2009-12-02 | 2009-12-02 | 5 |  |  | 2009-12-02 | 2009-12-02 | 1d | 2009-12-02 | 2009-12-02 | 3d |  | start no earlier than 2009-12-02 | Бригадир [20%]; Грунтовка [3 упаковка] | 1.6h |  | 502 | 502 |  |
| 8 | 1.2.2 | Покупка обоев и клея |  | 1d | 2009-12-02 | 2009-12-02 | 5 |  |  | 2009-12-02 | 2009-12-02 | 1d | 2009-12-02 | 2009-12-02 | 3d |  |  | Бригадир [20%]; Обои [5 рулон]; Клей для обоев [2 упаковка] | 1.6h |  | 1,247 | 1,247 |  |
| 9 | 1.2.3 | Покупка напольной плитки и клея |  | 1d | 2009-12-02 | 2009-12-02 | 5 |  |  | 2009-12-02 | 2009-12-02 | 1d | 2009-12-02 | 2009-12-02 | 3d |  | start no earlier than 2009-12-02 | Бригадир [20%]; Плитка напольная [55 шт]; Клей для плитки [3 упаковка] | 1.6h |  | 492 | 492 |  |
| 10 | 1.2.4 | Покупка сантехники |  | 1d | 2009-12-02 | 2009-12-02 | 5 |  |  | 2009-12-02 | 2009-12-02 | 1d | 2009-12-02 | 2009-12-02 | 3d | 0d |  | Бригадир [20%]; Унитаз [2 шт]; Раковина [2 шт]; Мойка для волос [1 шт] | 1.6h |  | 29,592 | 29,592 |  |
| 11 | 1.3 | **Ремонт помещения** |  | 8d | 2009-12-03 | 2009-12-14 | 6 |  |  | 2009-12-03 | 2009-12-14 | 8d | 2009-12-03 | 2009-12-14 | 3d |  |  |  | 32h |  | 34,895 | 34,895 |  |
| 12 | 1.3.1 | Сантехнические работы |  | 3d | 2009-12-03 | 2009-12-07 | 10 |  |  | 2009-12-03 | 2009-12-07 | 3d | 2009-12-03 | 2009-12-07 | 12d |  |  | Сантехник [50%] | 12h |  | 1,200 | 1,200 |  |
| 13 | 1.3.2 | Подготовка стен к поклейке обоев |  | 3d | 2009-12-08 | 2009-12-10 |  |  |  | 2009-12-08 | 2009-12-10 | 3d | 2009-12-08 | 2009-12-10 | 0d |  | start no earlier than 2009-12-08 | Мастер отделочных работ [50%]; Грунтовка [3 упаковка]; Штукатурка [3 упаковка] | 12h |  | 2,060 | 2,060 |  |
| 14 | 1.3.3 | Оклейка стен обоями |  | 1d | 2009-12-11 | 2009-12-11 | 13 |  |  | 2009-12-11 | 2009-12-11 | 1d | 2009-12-11 | 2009-12-11 | 8d |  |  | Мастер отделочных работ [25%]; Клей для обоев [2 упаковка]; Обои [5 рулон] | 2h |  | 1,295 | 1,295 |  |
| 15 | 1.3.4 | Плиточные работы |  | 1d | 2009-12-11 | 2009-12-11 | 13 |  |  | 2009-12-11 | 2009-12-11 | 1d | 2009-12-11 | 2009-12-11 | 0d |  |  | Мастер отделочных работ [25%]; Клей для плитки [3 упаковка]; Плитка напольная [50 шт] | 2h |  | 540 | 540 |  |
| 16 | 1.3.5 | Установка сантехники |  | 1d | 2009-12-14 | 2009-12-14 | 15 |  |  | 2009-12-14 | 2009-12-14 | 1d | 2009-12-14 | 2009-12-14 | 0d |  |  | Сантехник [50%]; Унитаз [2 шт]; Мойка для волос [1 шт]; Раковина [2 шт] | 4h |  | 29,800 | 29,800 |  |
| 17 | 1.3.6 | Сдача помещения | milestone | 0d | 2009-12-14 | 2009-12-14 | 16 |  |  | 2009-12-14 | 2009-12-14 |  | 2009-12-14 | 2009-12-14 | 0d |  |  | Бригадир |  |  |  |  |  |
| 18 | 1.4 | **Закупка рабочих пренадлежностей** |  | 2d | 2009-12-15 | 2009-12-16 | 17 |  |  | 2009-12-15 | 2009-12-16 | 2d | 2009-12-15 | 2009-12-16 | 0d |  |  |  | 12h |  | 309,720 | 259,720 |  |
| 19 | 1.4.1 | Покупка стойки администратора |  | 2d | 2009-12-15 | 2009-12-16 | 17 |  |  | 2009-12-15 | 2009-12-16 | 2d | 2009-12-15 | 2009-12-16 | 0d |  |  | Директор [10%]; Стойка администратора [1 шт] | 1.6h |  | 15,336 | 15,336 |  |
| 20 | 1.4.2 | Покупка стерилизатора |  | 2d | 2009-12-15 | 2009-12-16 | 17 |  |  | 2009-12-15 | 2009-12-16 | 2d | 2009-12-15 | 2009-12-16 | 0d |  |  | Директор [10%]; Стерилизатор [2 шт] | 1.6h |  | 1,836 | 1,836 |  |
| 21 | 1.4.3 | Покупка кофейного столика, витрины, лаборатории |  | 2d | 2009-12-15 | 2009-12-16 | 17 |  |  | 2009-12-15 | 2009-12-16 | 2d | 2009-12-15 | 2009-12-16 | 0d |  | start no earlier than 2009-12-15 | Директор [10%]; Кофейный столик [2 шт]; Витрина [1 шт]; Лаборатория [1 шт] | 1.6h |  | 120,336 | 70,336 |  |
| 22 | 1.4.4 | Покупка дивана |  | 1d | 2009-12-15 | 2009-12-15 | 17 |  |  | 2009-12-15 | 2009-12-15 | 1d | 2009-12-15 | 2009-12-15 | 1d |  |  | Директор [10%]; Диван [1 шт] | 0.8h |  | 7,168 | 7,168 |  |
| 23 | 1.4.5 | Покупка вапазона, фена, машинки |  | 1d | 2009-12-15 | 2009-12-15 | 17 |  |  | 2009-12-15 | 2009-12-15 | 1d | 2009-12-15 | 2009-12-15 | 1d |  |  | Директор [10%]; Вапазон [2 шт]; Фен [2 шт]; Машинка для стрижки [2 шт] | 0.8h |  | 67,168 | 67,168 |  |
| 24 | 1.4.6 | Покупка кресла для клиента |  | 1d | 2009-12-15 | 2009-12-15 | 17 |  |  | 2009-12-15 | 2009-12-15 | 1d | 2009-12-15 | 2009-12-15 | 1d |  |  | Директор [10%]; Кресло для клиента [2 шт] | 0.8h |  | 5,168 | 5,168 |  |
| 25 | 1.4.7 | Покупка ультрафиолетовой лампы |  | 1d | 2009-12-15 | 2009-12-15 | 17 |  |  | 2009-12-15 | 2009-12-15 | 1d | 2009-12-15 | 2009-12-15 | 1d |  |  | Директор [10%]; У/ф лампа [2 шт] | 0.8h |  | 5,168 | 5,168 |  |
| 26 | 1.4.8 | Покупка тележки |  | 1d | 2009-12-15 | 2009-12-15 | 17 |  |  | 2009-12-15 | 2009-12-15 | 1d | 2009-12-15 | 2009-12-15 | 1d |  |  | Директор [10%]; Тележка [2 шт] | 0.8h |  | 15,168 | 15,168 |  |
| 27 | 1.4.9 | Покупка телевизора |  | 1d | 2009-12-15 | 2009-12-15 | 17 |  |  | 2009-12-15 | 2009-12-15 | 1d | 2009-12-15 | 2009-12-15 | 1d |  |  | Директор [10%]; ЖК телевизор [1 шт] | 0.8h |  | 20,168 | 20,168 |  |
| 28 | 1.4.10 | Покупка зеркала |  | 1d | 2009-12-15 | 2009-12-15 | 17 |  |  | 2009-12-15 | 2009-12-15 | 1d | 2009-12-15 | 2009-12-15 | 1d |  |  | Директор [10%]; Зеркало [3 шт] | 0.8h |  | 5,168 | 5,168 |  |
| 29 | 1.4.11 | Покупка кассового аппарата |  | 1d | 2009-12-15 | 2009-12-15 | 17 |  |  | 2009-12-15 | 2009-12-15 | 1d | 2009-12-15 | 2009-12-15 | 1d |  |  | Директор [10%]; Кассовый аппарат [1 шт] | 0.8h |  | 10,168 | 10,168 |  |
| 30 | 1.4.12 | Покупка компьютера и переферии |  | 1d | 2009-12-15 | 2009-12-15 | 17 |  |  | 2009-12-15 | 2009-12-15 | 1d | 2009-12-15 | 2009-12-15 | 1d |  |  | Директор [10%]; Компьютер [1 шт]; Колонки музыкальные [1 шт]; Мышь компьютерная [1 шт]; Монитор [1 шт]; Клавиатура [1 шт] | 0.8h |  | 36,868 | 36,868 |  |

| ID | WBS | Task | Type | Duration | Start | Finish | Predecessors | Baseline start | Baseline finish | Baseline duration | Baseline 1 start | Baseline 1 finish | Total slack | Constraint | Resources | Work | Cost | Baseline cost |
| --- | --- | --- | --- | --- | --- | --- | --- | --- | --- | --- | --- | --- | --- | --- | --- | --- | --- | --- |
| 31 | 1.5 | **Поиск специалистов** |  | 5d | 2009-12-17 | 2009-12-23 | 18 | 2009-12-17 | 2009-12-23 | 5d | 2009-12-17 | 2009-12-23 | 0d |  |  | 80h | 16,800 | 16,800 |
| 32 | 1.5.1 | Собеседования для парикмахеров и стилистов |  | 5d | 2009-12-17 | 2009-12-23 | 18 | 2009-12-17 | 2009-12-23 | 5d | 2009-12-17 | 2009-12-23 | 0d |  | Директор | 40h | 8,400 | 8,400 |
| 33 | 1.5.2 | Собеседования для обслуживающего персонала |  | 5d | 2009-12-17 | 2009-12-23 | 18 | 2009-12-17 | 2009-12-23 | 5d | 2009-12-17 | 2009-12-23 | 0d | start no earlier than 2009-12-17 | Директор | 40h | 8,400 | 8,400 |
| 34 | 1.6 | **Маркетинг** |  | 0d | 2009-12-23 | 2009-12-23 | 31 | 2009-12-23 | 2009-12-23 |  | 2009-12-23 | 2009-12-23 | 0d |  |  |  | 6,000 | 6,000 |
| 35 | 1.6.1 | Установка вывески | milestone | 0d | 2009-12-23 | 2009-12-23 | 31 | 2009-12-23 | 2009-12-23 |  | 2009-12-23 | 2009-12-23 | 0d |  | Директор [30%]; Заказ вывески |  | 3,000 | 3,000 |
| 36 | 1.6.2 | Реклама в интернете | milestone | 0d | 2009-12-23 | 2009-12-23 | 35 | 2009-12-23 | 2009-12-23 |  | 2009-12-23 | 2009-12-23 | 0d |  | Директор [30%]; Заказ вывески |  | 3,000 | 3,000 |
| 37 | 1.7 | **Работа салона** |  | 0d | 2009-12-23 | 2009-12-23 | 34 | 2009-12-23 | 2009-12-23 |  | 2009-12-23 | 2009-12-23 | 0d |  |  |  |  |  |
| 38 | 1.7.1 | Обслуживание клиентов | milestone | 0d | 2009-12-23 | 2009-12-23 | 34 | 2009-12-23 | 2009-12-23 |  | 2009-12-23 | 2009-12-23 | 0d |  | Директор [200%]; Управляющий; Парикмахер; Техперсонал [50%] |  |  |  |
