Schedule from MS Project, 2009-11-16 to 2009-12-22, costs in р., A marks actual dates.
Microsoft

## Calendars

- Стандартный: Mon-Fri 09:00-13:00, 14:00-18:00; Sat-Sun off.

## Resources

| Resource | Group | Unit | Rate | Cost per use |
| --- | --- | --- | --- | --- |
| Директор |  |  | 200 |  |
| Управляющий |  |  | 160 |  |
| Маникюрщица |  |  | 150 |  |
| Техперсонал |  |  | 75 |  |
| Бригадир |  |  | 120 |  |
| Мастер отделочных работ |  |  | 120 |  |
| Электрик |  |  | 100 |  |
| Сантехник |  |  | 100 |  |
| Оформление документации |  |  |  |  |
| Установка кассового аппарата |  |  |  |  |
| Доставка материалов и оборудования |  |  |  |  |
| Заказ вывески |  |  |  |  |
| Заказ рекламы в Интернете |  |  |  |  |
| Обои | Стройматериалы | рулон |  | 800 |
| Плитка напольная | Стройматериалы | шт |  | 200 |
| Клей для обоев | Стройматериалы | упаковка |  | 255 |
| Клей длй плитки | Стройматериалы | упаковка |  | 100 |
| Светильники | Оборудование | шт |  | 1000 |
| Раковина "Венеция 55" | Оборудование | шт |  | 1900 |
| Унитаз Sersanit | Оборудование | шт |  | 2500 |
| Маникюрный стол | Оборудование | шт |  | 20000 |
| Стерилизатор | Оборудование | шт |  | 1500 |
| Педикюрное кресло | Оборудование | шт |  | 30000 |
| Диван | Мебель | шт |  | 5000 |
| Кресло для маникюрщицы | Мебель | шт |  | 3000 |
| Кресло для клиента | Мебель | шт |  | 2000 |
| У/ф лампа | Оборудование | шт |  | 5000 |
| Ванна для распаривания | Оборудование | шт |  | 5000 |
| Компьютер | Оборудование | шт |  | 30000 |
| Монитор | Оборудование | шт |  | 5000 |
| Мышь компьютерная | Оборудование | шт |  | 300 |
| Клавиатура | Оборудование | шт |  | 400 |
| Колонки музыкальные | Оборудование | шт |  | 1000 |
| Кассовый аппарат | Оборудование | шт |  | 10000 |
| Бюджет фирмы |  |  |  |  |
| Бюджет инвестора 1 |  |  |  |  |
| Бюджет инвестора 2 |  |  |  |  |
| Юрист |  |  | 200 |  |
| Юрист |  |  | 210 |  |

## Schedule

| ID | WBS | Task | Type | Duration | Start | Finish | Predecessors | Complete | Remaining | Baseline start | Baseline finish | Baseline duration | Total slack | Free slack | Resources | Work | Cost | Baseline cost | Actual cost |
| --- | --- | --- | --- | --- | --- | --- | --- | --- | --- | --- | --- | --- | --- | --- | --- | --- | --- | --- | --- |
| 1 | 1 | **Открытие маникюрного салона** |  | 27d | 2009-11-16 A | 2009-12-22 |  | 32% | 18.41d | 2009-11-16 | 2009-12-22 | 27d | 0d |  |  | 160h | 171,590 | 171,590 | 50,455 |
| 2 | 1.1 | **Подготовительные работы** |  | 12d | 2009-11-16 A | 2009-12-01 A |  | 100% |  | 2009-11-16 | 2009-12-01 | 12d |  |  |  |  | 7,000 | 7,000 | 7,000 |
| 3 | 1.1.1 | Оформление документов |  | 7d | 2009-11-16 A | 2009-11-24 A |  | 100% |  | 2009-11-16 | 2009-11-24 | 7d |  |  | Оформление документации [0.1%] |  | 7,000 | 7,000 | 7,000 |
| 4 | 1.1.2 | Выбор помещения |  | 5d | 2009-11-25 A | 2009-12-01 A | 3 | 100% |  | 2009-11-25 | 2009-12-01 | 5d |  |  |  |  |  |  |  |
| 5 | 1.1.3 | Заключение договора | milestone | 0d | 2009-12-01 A | 2009-12-01 A | 4 | 100% |  | 2009-12-01 | 2009-12-01 |  |  |  |  |  |  |  |  |
| 6 | 1.2 | **Закупка стройматериалов** |  | 2d | 2009-12-02 A | 2009-12-03 | 5 | 75% | 0.5d | 2009-12-02 | 2009-12-03 | 2d | 0d |  |  |  | 6,755 | 6,755 | 6,755 |
| 7 | 1.2.1 | Покупка обоев и клея |  | 1d | 2009-12-02 A | 2009-12-02 A | 5 | 100% |  | 2009-12-02 | 2009-12-02 | 1d |  |  | Обои [7 рулон]; Клей для обоев [1 упаковка] |  | 1,055 | 1,055 | 1,055 |
| 8 | 1.2.2 | Покупка напольной плитки и клея |  | 1d | 2009-12-02 A | 2009-12-02 | 5 | 50% | 0.5d | 2009-12-02 | 2009-12-02 | 1d | 1d |  | Плитка напольная [50 шт]; Клей длй плитки [1 упаковка] |  | 300 | 300 | 300 |
| 9 | 1.2.3 | Покупка освещения |  | 2d | 2009-12-02 A | 2009-12-03 | 5 | 75% | 0.5d | 2009-12-02 | 2009-12-03 | 2d | 0d |  | Светильники [5 шт] |  | 1,000 | 1,000 | 1,000 |
| 10 | 1.2.4 | Покупка сантехники |  | 2d | 2009-12-02 A | 2009-12-03 | 5 | 75% | 0.5d | 2009-12-02 | 2009-12-03 | 2d | 0d |  | Унитаз Sersanit [2 шт]; Раковина "Венеция 55" [3 шт] |  | 4,400 | 4,400 | 4,400 |
| 11 | 1.3 | **Ремонт помещения** |  | 4d | 2009-12-04 | 2009-12-09 | 6 |  |  | 2009-12-04 | 2009-12-09 | 4d | 0d |  |  | 48h | 16,275 | 16,275 |  |
| 12 | 1.3.1 | Замена проводки |  | 3d | 2009-12-04 | 2009-12-08 | 9 |  |  | 2009-12-04 | 2009-12-08 | 3d | 9d | 0d | Электрик [50%] | 12h | 1,200 | 1,200 |  |
| 13 | 1.3.2 | Сантехнические работы |  | 3d | 2009-12-04 | 2009-12-08 | 10 |  |  | 2009-12-04 | 2009-12-08 | 3d | 0d |  | Сантехник [50%]; Унитаз Sersanit [2 шт]; Раковина "Венеция 55" [3 шт] | 12h | 5,600 | 5,600 |  |
| 14 | 1.3.3 | Оклейка стен обоями |  | 1d | 2009-12-04 | 2009-12-04 | 7 |  |  | 2009-12-04 | 2009-12-04 | 1d | 12d |  | Мастер отделочных работ; Обои [7 рулон]; Клей для обоев [1 упаковка] | 8h | 2,015 | 2,015 |  |
| 15 | 1.3.4 | Плиточные работы |  | 1d | 2009-12-04 | 2009-12-04 | 8 |  |  | 2009-12-04 | 2009-12-04 | 1d | 12d |  | Мастер отделочных работ; Плитка напольная [50 шт]; Клей длй плитки [1 упаковка] | 8h | 1,260 | 1,260 |  |
| 16 | 1.3.5 | Установка приборов освещения |  | 1d | 2009-12-09 | 2009-12-09 | 12 |  |  | 2009-12-09 | 2009-12-09 | 1d | 9d |  | Электрик [50%]; Светильники [5 шт] | 4h | 1,400 | 1,400 |  |
| 17 | 1.3.6 | Установка сантехники |  | 1d | 2009-12-09 | 2009-12-09 | 13 |  |  | 2009-12-09 | 2009-12-09 | 1d | 0d |  | Сантехник [50%]; Унитаз Sersanit [2 шт]; Раковина "Венеция 55" [3 шт] | 4h | 4,800 | 4,800 |  |
| 18 | 1.3.7 | Сдача помещения | milestone | 0d | 2009-12-09 | 2009-12-09 | 17 |  |  | 2009-12-09 | 2009-12-09 |  | 0d |  | Бригадир |  |  |  |  |
| 19 | 1.4 | **Закупка рабочих пренадлежностей** |  | 2d | 2009-12-10 A | 2009-12-11 | 18 | 8% | 1.85d | 2009-12-10 | 2009-12-11 | 2d | 0d |  |  |  | 118,200 | 118,200 | 36,700 |
| 20 | 1.4.1 | Покупка маникюрного стола |  | 2d | 2009-12-10 | 2009-12-11 | 18 |  |  | 2009-12-10 | 2009-12-11 | 2d | 0d |  | Маникюрный стол [1 шт] |  | 20,000 | 20,000 |  |
| 21 | 1.4.2 | Покупка стерилизатора |  | 2d | 2009-12-10 | 2009-12-11 | 18 |  |  | 2009-12-10 | 2009-12-11 | 2d | 0d |  | Стерилизатор [1 шт] |  | 1,500 | 1,500 |  |
| 22 | 1.4.3 | Покупка педикюрного кресла |  | 2d | 2009-12-10 | 2009-12-11 | 18 |  |  | 2009-12-10 | 2009-12-11 | 2d | 0d |  | Педикюрное кресло [1 шт] |  | 30,000 | 30,000 |  |
| 23 | 1.4.4 | Покупка дивана |  | 1d | 2009-12-10 | 2009-12-10 | 18 |  |  | 2009-12-10 | 2009-12-10 | 1d | 1d |  | Диван [1 шт] |  | 5,000 | 5,000 |  |
| 24 | 1.4.5 | Покупка кресла для маникюрщицы |  | 1d | 2009-12-10 | 2009-12-10 | 18 |  |  | 2009-12-10 | 2009-12-10 | 1d | 1d |  | Кресло для маникюрщицы [1 шт] |  | 3,000 | 3,000 |  |
| 25 | 1.4.6 | Покупка кресла для клиента |  | 1d | 2009-12-10 | 2009-12-10 | 18 |  |  | 2009-12-10 | 2009-12-10 | 1d | 1d |  | Кресло для клиента [1 шт] |  | 2,000 | 2,000 |  |
| 26 | 1.4.7 | Покупка у/ф лампы |  | 1d | 2009-12-10 | 2009-12-10 | 18 |  |  | 2009-12-10 | 2009-12-10 | 1d | 1d |  | У/ф лампа [1 шт] |  | 5,000 | 5,000 |  |
| 27 | 1.4.8 | Покупка ванны для распаривания |  | 1d | 2009-12-10 | 2009-12-10 | 18 |  |  | 2009-12-10 | 2009-12-10 | 1d | 1d |  | Ванна для распаривания [1 шт] |  | 5,000 | 5,000 |  |
| 28 | 1.4.9 | Покупка кассового аппарата |  | 1d | 2009-12-10 | 2009-12-10 | 18 |  |  | 2009-12-10 | 2009-12-10 | 1d | 1d |  | Кассовый аппарат [1 шт] |  | 10,000 | 10,000 |  |
| 29 | 1.4.10 | Покупка компьютера |  | 1d | 2009-12-10 A | 2009-12-10 A | 18 | 100% |  | 2009-12-10 | 2009-12-10 | 1d |  |  | Клавиатура [1 шт]; Колонки музыкальные [1 шт]; Компьютер [1 шт]; Монитор [1 шт]; Мышь компьютерная [1 шт] |  | 36,700 | 36,700 | 36,700 |

| ID | WBS | Task | Type | Duration | Start | Finish | Predecessors | Baseline start | Baseline finish | Baseline duration | Total slack | Resources | Work | Cost | Baseline cost |
| --- | --- | --- | --- | --- | --- | --- | --- | --- | --- | --- | --- | --- | --- | --- | --- |
| 30 | 1.5 | **Поиск специалистов** |  | 7d | 2009-12-14 | 2009-12-22 | 19 | 2009-12-14 | 2009-12-22 | 7d | 0d |  | 112h | 17,360 | 17,360 |
| 31 | 1.5.1 | Собеседования для маникюрщиц |  | 7d | 2009-12-14 | 2009-12-22 | 19 | 2009-12-14 | 2009-12-22 | 7d | 0d | Маникюрщица | 56h | 8,400 | 8,400 |
| 32 | 1.5.2 | Собеседования для обслуживающего персонала |  | 7d | 2009-12-14 | 2009-12-22 | 19 | 2009-12-14 | 2009-12-22 | 7d | 0d | Управляющий | 56h | 8,960 | 8,960 |
| 33 | 1.6 | **Маркетинг** |  | 0d | 2009-12-22 | 2009-12-22 | 30 | 2009-12-22 | 2009-12-22 |  | 0d |  |  | 6,000 | 6,000 |
| 34 | 1.6.1 | Установка вывески | milestone | 0d | 2009-12-22 | 2009-12-22 | 30 | 2009-12-22 | 2009-12-22 |  | 0d | Заказ вывески |  | 3,000 | 3,000 |
| 35 | 1.6.2 | Реклама в интернете | milestone | 0d | 2009-12-22 | 2009-12-22 | 34 | 2009-12-22 | 2009-12-22 |  | 0d | Заказ рекламы в Интернете |  | 3,000 | 3,000 |
| 36 | 1.6.3 | Сотрудничество с салонами красоты | milestone | 0d | 2009-12-22 | 2009-12-22 | 34 | 2009-12-22 | 2009-12-22 |  | 0d |  |  |  |  |
| 37 | 1.7 | **Работа салона** |  | 0d | 2009-12-22 | 2009-12-22 | 33 | 2009-12-22 | 2009-12-22 |  | 0d |  |  |  |  |
| 38 | 1.7.1 | Обслуживание клиентов | milestone | 0d | 2009-12-22 | 2009-12-22 | 33 | 2009-12-22 | 2009-12-22 |  | 0d |  |  |  |  |
